# Cronograma

Schedule from MS Project, 2025-09-19 to 2025-12-11, costs in €.

## Calendars

- Calendario Green Garden: Mon-Sun 09:00-13:00, 15:00-19:00.

## Resources

| Resource | Group | Rate |
| --- | --- | --- |
| Jefe de proyecto 1 | Equipo de dirección de proyecto | 40 |
| Jefe de proyecto 2 | Equipo de dirección de proyecto | 40 |
| Jefe de proyecto 3 | Equipo de dirección de proyecto | 40 |
| Jefe de proyecto 4 | Equipo de dirección de proyecto | 40 |
| Jefe de proyecto 5 | Equipo de dirección de proyecto | 40 |
| Analista funcional 1 | Equipo de trabajo | 30 |
| Analista funcional 2 | Equipo de trabajo | 30 |
| Analista funcional 3 | Equipo de trabajo | 30 |
| Desarrollador Backend 1 | Equipo de trabajo | 30 |
| Desarrollador Backend 2 | Equipo de trabajo | 30 |
| Desarrollador Backend 3 | Equipo de trabajo | 30 |
| Desarrollador Backend 4 | Equipo de trabajo | 30 |
| Desarrollador Frontend 1 | Equipo de trabajo | 30 |
| Desarrollador Frontend 2 | Equipo de trabajo | 30 |
| Desarrollador Frontend 3 | Equipo de trabajo | 30 |
| Desarrollador Frontend 4 | Equipo de trabajo | 30 |
| Diseñador UI/UX 1 | Equipo de trabajo | 30 |
| Tester Q/A 1 | Equipo de trabajo | 30 |
| Tester Q/A 2 | Equipo de trabajo | 30 |
| Tester Q/A 3 | Equipo de trabajo | 30 |
| Tester Q/A 4 | Equipo de trabajo | 30 |
| Portátiles |  |  |
| Móviles |  |  |
| Conexión a Internet |  |  |
| Formación en Django |  |  |
| Servicios en la nube |  |  |
| Reserva de contingencia |  | 1350 |

## Schedule

| ID | WBS | Task | Type | Duration | Start | Finish | Predecessors | Baseline 1 start | Baseline 1 finish | Total slack | Constraint | Resources | Work | Cost |
| --- | --- | --- | --- | --- | --- | --- | --- | --- | --- | --- | --- | --- | --- | --- |
| 1 | 1 | **Green Garden** |  | 84d? | 2025-09-19 | 2025-12-11 |  | 2025-09-19 | 2025-12-11 | 0d | start no earlier than 2025-09-18 | Reserva de contingencia | 576h | 20,190 |
| 2 | 1.1 | **Gestión y Documentación del Proyecto** |  | 76d? | 2025-09-19 | 2025-12-03 |  | 2025-09-19 | 2025-12-03 | 0d |  |  | 173h | 6,350 |
| 3 | 1.1.1 | **Documentación del ciclo de vida del proyecto** |  | 76d? | 2025-09-19 | 2025-12-03 |  | 2025-09-19 | 2025-12-03 | 0d |  |  | 173h | 6,350 |
| 4 | 1.1.1.1 | **Redacción y mantenimiento del documentación del proyecto** |  | 76d? | 2025-09-19 | 2025-12-03 |  | 2025-09-19 | 2025-12-03 | 0d |  |  | 173h | 6,350 |
| 5 | 1.1.1.1.1 | Elaborar documentación de inicio del proyecto | manual | 1d | 2025-09-19 | 2025-09-19 |  | 2025-09-19 | 2025-09-19 |  |  | Jefe de proyecto 1 [20%]; Portátiles [500%]; Móviles [500%]; Conexión a Internet [500%]; Jefe de proyecto 2 [20%]; Jefe de proyecto 3 [20%]; Jefe de proyecto 4 [20%]; Jefe de proyecto 5 [20%] | 15h | 600 |
| 6 | 1.1.1.1.2 | Elaborar documentación de planificación del proyecto | manual | 32d | 2025-09-26 | 2025-10-27 |  | 2025-09-26 | 2025-10-27 |  |  | Jefe de proyecto 1; Jefe de proyecto 2; Jefe de proyecto 3; Jefe de proyecto 4; Jefe de proyecto 5; Portátiles [500%]; Móviles [500%]; Conexión a Internet [500%] | 80h | 3,200 |
| 7 | 1.1.1.1.3 | Elaborar documentación de ejecución del proyecto | manual | 22d | 2025-11-03 | 2025-11-24 |  | 2025-11-03 | 2025-11-24 |  |  | Analista funcional 1; Portátiles; Conexión a Internet; Móviles | 16h | 480 |
| 8 | 1.1.1.1.4 | **Elaborar documentación de seguimiento y control de riesgos y calidad** |  | 21d? | 2025-11-03 | 2025-11-23 |  | 2025-11-03 | 2025-11-23 | 0d |  |  | 46h | 1,510 |
| 9 | 1.1.1.1.4.1 | **Realizar los Sprint Backlogs** |  | 17d | 2025-11-03 | 2025-11-19 |  | 2025-11-03 | 2025-11-19 | 0d |  |  | 6h | 180 |
| 10 | 1.1.1.1.4.1.1 | Sprint Backlog 1 | manual | 3d | 2025-11-03 | 2025-11-05 |  | 2025-11-03 | 2025-11-05 |  | start no earlier than 2025-11-03 | Analista funcional 2; Portátiles; Móviles; Conexión a Internet | 2h | 60 |
| 11 | 1.1.1.1.4.1.2 | Sprint Backlog 2 | manual | 3d | 2025-11-10 | 2025-11-12 |  | 2025-11-10 | 2025-11-12 |  | start no earlier than 2025-11-10 | Analista funcional 2; Portátiles; Móviles; Conexión a Internet | 2h | 60 |
| 12 | 1.1.1.1.4.1.3 | Sprint Backlog 3 | manual | 3d | 2025-11-17 | 2025-11-19 |  | 2025-11-17 | 2025-11-19 |  | start no earlier than 2025-11-17 | Analista funcional 2; Portátiles; Móviles; Conexión a Internet | 2h | 60 |
| 13 | 1.1.1.1.4.2 | **Realizar los Sprint Review** |  | 15d? | 2025-11-09 | 2025-11-23 |  | 2025-11-09 | 2025-11-23 | 0d |  |  | 6h | 180 |
| 14 | 1.1.1.1.4.2.1 | Sprint Review 1 | manual | 1d | 2025-11-09 | 2025-11-09 |  | 2025-11-09 | 2025-11-09 |  | start no earlier than 2025-11-09 | Analista funcional 3; Portátiles; Móviles; Conexión a Internet | 2h | 60 |
| 15 | 1.1.1.1.4.2.2 | Sprint Review 2 | manual | 1d? | 2025-11-16 | 2025-11-16 |  | 2025-11-16 | 2025-11-16 |  | start no earlier than 2025-11-16 | Analista funcional 3; Portátiles; Móviles; Conexión a Internet | 2h | 60 |
| 16 | 1.1.1.1.4.2.3 | Sprint Review 3 | manual | 1d? | 2025-11-23 | 2025-11-23 |  | 2025-11-23 | 2025-11-23 |  | start no earlier than 2025-11-23 | Analista funcional 3; Portátiles; Móviles; Conexión a Internet | 2h | 60 |
| 17 | 1.1.1.1.4.3 | **Realizar los Sprint Retrospective** |  | 15d? | 2025-11-09 | 2025-11-23 |  | 2025-11-09 | 2025-11-23 | 0d |  |  | 6h | 240 |
| 18 | 1.1.1.1.4.3.1 | Sprint Retrospective 1 | manual | 1d | 2025-11-09 | 2025-11-09 |  | 2025-11-09 | 2025-11-09 |  | start no earlier than 2025-11-09 | Jefe de proyecto 1; Portátiles; Móviles; Conexión a Internet | 2h | 80 |
| 19 | 1.1.1.1.4.3.2 | Sprint Retrospective 2 | manual | 1d? | 2025-11-16 | 2025-11-16 |  | 2025-11-16 | 2025-11-16 |  | start no earlier than 2025-11-16 | Jefe de proyecto 1; Portátiles; Móviles; Conexión a Internet | 2h | 80 |
| 20 | 1.1.1.1.4.3.3 | Sprint Retrospective 3 | manual | 1d? | 2025-11-23 | 2025-11-23 |  | 2025-11-23 | 2025-11-23 |  | start no earlier than 2025-11-23 | Jefe de proyecto 1; Portátiles; Móviles; Conexión a Internet | 2h | 80 |
| 21 | 1.1.1.1.4.4 | Generar Informe de Seguimiento de Costes (MS Project) | manual | 1d | 2025-11-08 | 2025-11-08 | 25 | 2025-11-08 | 2025-11-08 |  |  | Jefe de proyecto 1; Portátiles; Móviles; Conexión a Internet | 2h | 80 |
| 22 | 1.1.1.1.4.5 | Generar Informe de Seguimiento del Cronograma (MS Project) | manual | 1d | 2025-11-08 | 2025-11-08 |  | 2025-11-08 | 2025-11-08 |  |  | Jefe de proyecto 2; Portátiles; Móviles; Conexión a Internet | 2h | 80 |
| 23 | 1.1.1.1.4.6 | Elaborar Informes Diarios del Desempeño del Equipo de Trabajo | manual | 21d | 2025-11-03 | 2025-11-23 |  | 2025-11-03 | 2025-11-23 |  |  | Analista funcional 2; Portátiles; Móviles; Conexión a Internet | 15h | 450 |
| 24 | 1.1.1.1.4.7 | Elaborar el Registro de Decisiones | manual | 1d | 2025-11-07 | 2025-11-07 |  | 2025-11-07 | 2025-11-07 |  |  | Jefe de proyecto 1; Portátiles; Móviles; Conexión a Internet | 3h | 120 |
| 25 | 1.1.1.1.4.8 | Elaborar el Registro de Incidencias | manual | 1d | 2025-11-07 | 2025-11-07 |  | 2025-11-07 | 2025-11-07 |  |  | Analista funcional 2; Portátiles; Móviles; Conexión a Internet | 3h | 90 |
| 26 | 1.1.1.1.4.9 | Elaborar el Registro de Cambios | manual | 1d | 2025-11-07 | 2025-11-07 |  | 2025-11-07 | 2025-11-07 |  |  | Analista funcional 2; Portátiles; Móviles; Conexión a Internet | 3h | 90 |

| ID | WBS | Task | Type | Duration | Start | Finish | Predecessors | Baseline 1 start | Baseline 1 finish | Total slack | Resources | Work | Cost |
| --- | --- | --- | --- | --- | --- | --- | --- | --- | --- | --- | --- | --- | --- |
| 27 | 1.1.1.1.5 | **Elaborar documentación de cierre del proyecto** |  | 5d | 2025-11-29 | 2025-12-03 |  | 2025-11-29 | 2025-12-03 | 0d |  | 16h | 560 |
| 28 | 1.1.1.1.5.1 | Redactar Lecciones Aprendidas | manual | 1d | 2025-11-29 | 2025-11-29 | 21, 22 | 2025-11-29 | 2025-11-29 |  | Jefe de proyecto 1 [50%]; Móviles; Conexión a Internet; Portátiles | 4h | 160 |
| 29 | 1.1.1.1.5.2 | Elaborar Informe de Cierre del Proyecto | manual | 1d | 2025-12-01 | 2025-12-01 | 28, 21, 22 | 2025-12-01 | 2025-12-01 |  | Jefe de proyecto 1 [50%]; Portátiles; Móviles; Conexión a Internet | 4h | 160 |
| 30 | 1.1.1.1.5.3 | Preparar Presentación Final del Proyecto | manual | 2d | 2025-12-02 | 2025-12-03 |  | 2025-12-02 | 2025-12-03 |  | Analista funcional 1 [50%]; Portátiles; Móviles; Conexión a Internet | 8h | 240 |
| 31 | 1.2 | **Implementación Técnica y Funcional** |  | 19d? | 2025-10-30 | 2025-11-17 |  | 2025-10-30 | 2025-11-17 | 0d |  | 163h | 5,290 |
| 32 | 1.2.1 | **Inicialización del Proyecto** |  | 5d | 2025-10-30 | 2025-11-03 |  | 2025-10-30 | 2025-11-03 | 0d |  | 45h | 1,750 |
| 33 | 1.2.1.1 | **Preparación Técnica del Entorno** |  | 5d | 2025-10-30 | 2025-11-03 |  | 2025-10-30 | 2025-11-03 | 0d | Servicios en la nube | 5h | 150 |
| 34 | 1.2.1.1.1 | Configurar Entorno de Trabajo | manual | 1d | 2025-10-30 | 2025-10-30 |  | 2025-10-30 | 2025-10-30 |  | Desarrollador Backend 1 [25%]; Portátiles; Conexión a Internet; Móviles; Servicios en la nube | 2h | 60 |
| 35 | 1.2.1.1.2 | Diseñar el Modelo de Datos (Diagrama UML) | manual | 1d | 2025-11-03 | 2025-11-03 |  | 2025-11-03 | 2025-11-03 |  | Analista funcional 1 [30%]; Portátiles; Conexión a Internet | 3h | 90 |
| 36 | 1.2.1.2 | **Formación y Capacitación del Equipo** |  | 5d | 2025-10-30 | 2025-11-03 |  | 2025-10-30 | 2025-11-03 | 0d |  | 40h | 1,600 |
| 37 | 1.2.1.2.1 | Realizar Formación en Django | manual | 5d | 2025-10-30 | 2025-11-03 |  | 2025-10-30 | 2025-11-03 |  | Jefe de proyecto 1 [20%]; Jefe de proyecto 2 [20%]; Jefe de proyecto 3 [20%]; Jefe de proyecto 4 [20%]; Jefe de proyecto 5 [20%]; Portátiles [500%]; Móviles [500%]; Conexión a Internet [500%]; Formación en Django | 40h | 1,600 |
| 38 | 1.2.2 | **Desarrollo Funcional del Sistema** |  | 15d? | 2025-11-03 | 2025-11-17 |  | 2025-11-03 | 2025-11-17 | 0d |  | 118h | 3,540 |
| 39 | 1.2.2.1 | **Gestión de Catálogo y Búsqueda de Productos** |  | 2d? | 2025-11-07 | 2025-11-08 |  | 2025-11-07 | 2025-11-08 |  |  | 13h | 390 |
| 40 | 1.2.2.1.1 | Implementar Ficha de Producto | manual | 1d | 2025-11-03 | 2025-11-03 | 35 | 2025-11-03 | 2025-11-03 |  | Desarrollador Backend 1 [30%]; Portátiles; Conexión a Internet | 3h | 90 |
| 41 | 1.2.2.1.2 | Implementar Servicio de Listado de Productos (Catálogo) | manual | 1d | 2025-11-04 | 2025-11-04 | 40 | 2025-11-04 | 2025-11-04 |  | Desarrollador Backend 1 [63%]; Portátiles; Conexión a Internet | 5h | 150 |
| 42 | 1.2.2.1.3 | Implementar Lógica de Buscador y Filtros | manual | 1d | 2025-11-05 | 2025-11-05 | 40, 41 | 2025-11-05 | 2025-11-05 |  | Desarrollador Backend 1 [63%]; Portátiles; Conexión a Internet | 5h | 150 |
| 43 | 1.2.2.2 | **Gestión de Cuentas y Sesiones de Usuario** |  | 2d | 2025-11-05 | 2025-11-06 |  | 2025-11-05 | 2025-11-06 | 0d |  | 4h | 120 |
| 44 | 1.2.2.2.1 | Implementar Gestión de Usuarios | manual | 2d | 2025-11-05 | 2025-11-06 | 35 | 2025-11-05 | 2025-11-06 |  | Desarrollador Backend 2 [25%]; Portátiles; Conexión a Internet | 4h | 120 |
| 45 | 1.2.2.3 | **Gestión del Proceso de Compra** |  | 12d | 2025-11-06 | 2025-11-17 |  | 2025-11-06 | 2025-11-17 | 0d |  | 73h | 2,190 |
| 46 | 1.2.2.3.1 | Implementar Gestión de Cesta de Compra | manual | 5d | 2025-11-06 | 2025-11-10 | 35, 40 | 2025-11-06 | 2025-11-10 |  | Desarrollador Backend 3 [75%]; Portátiles; Conexión a Internet | 30h | 900 |
| 47 | 1.2.2.3.2 | Implementar Proceso de Compra y Pagos | manual | 4d | 2025-11-11 | 2025-11-14 | 46 | 2025-11-11 | 2025-11-14 |  | Desarrollador Backend 4 [94%]; Portátiles; Conexión a Internet | 30h | 900 |
| 48 | 1.2.2.3.3 | Implementar Seguimiento de Pedidos | manual | 3d | 2025-11-15 | 2025-11-17 | 35, 47 | 2025-11-15 | 2025-11-17 |  | Desarrollador Backend 1 [50%]; Portátiles [200%]; Conexión a Internet [200%]; Móviles [200%] | 13h | 390 |
| 49 | 1.2.2.4 | **Backoffice de Administración del Sistema** |  | 11d | 2025-11-07 | 2025-11-17 |  | 2025-11-07 | 2025-11-17 | 0d |  | 28h | 840 |
| 50 | 1.2.2.4.1 | Implementar Gestión de Productos | manual | 2d | 2025-11-07 | 2025-11-08 | 40, 41 | 2025-11-07 | 2025-11-08 |  | Desarrollador Backend 1 [50%]; Portátiles; Conexión a Internet | 7h | 210 |
| 51 | 1.2.2.4.2 | Implementar Gestión de Clientes | manual | 2d | 2025-11-08 | 2025-11-09 | 44 | 2025-11-08 | 2025-11-09 |  | Desarrollador Backend 2 [50%]; Portátiles; Conexión a Internet | 7h | 210 |
| 52 | 1.2.2.4.3 | Implementar Gestión de Pedidos | manual | 2d | 2025-11-16 | 2025-11-17 | 35, 40 | 2025-11-16 | 2025-11-17 |  | Desarrollador Backend 1 [50%]; Portátiles; Conexión a Internet | 7h | 210 |
| 53 | 1.2.2.4.4 | Implementar Gestión de Ventas | manual | 2d | 2025-11-15 | 2025-11-16 | 35, 40, 47 | 2025-11-15 | 2025-11-16 |  | Desarrollador Backend 2 [50%]; Portátiles; Conexión a Internet | 7h | 210 |

| ID | WBS | Task | Type | Duration | Start | Finish | Predecessors | Baseline 1 start | Baseline 1 finish | Total slack | Resources | Work | Cost |
| --- | --- | --- | --- | --- | --- | --- | --- | --- | --- | --- | --- | --- | --- |
| 54 | 1.3 | **Desarrollo de Experiencia e Interfaz de Usuario** |  | 18d | 2025-11-01 | 2025-11-18 |  | 2025-11-01 | 2025-11-18 | 0d |  | 151h | 4,530 |
| 55 | 1.3.1 | **Contrucción de la Interfaz del Sistema** |  | 18d | 2025-11-01 | 2025-11-18 |  | 2025-11-01 | 2025-11-18 | 0d |  | 151h | 4,530 |
| 56 | 1.3.1.1 | **Diseño de la Interfaz de Usuario** |  | 4d | 2025-11-01 | 2025-11-04 |  | 2025-11-01 | 2025-11-04 | 0d |  | 16h | 480 |
| 57 | 1.3.1.1.1 | Diseño de Mockups de la Interfaz | manual | 2d | 2025-11-01 | 2025-11-02 |  | 2025-11-01 | 2025-11-02 |  | Diseñador UI/UX 1 [50%]; Portátiles; Conexión a Internet | 8h | 240 |
| 58 | 1.3.1.1.2 | Definir la Estructura de la Intrefaz | manual | 2d | 2025-11-03 | 2025-11-04 | 57 | 2025-11-03 | 2025-11-04 |  | Diseñador UI/UX 1 [50%]; Portátiles; Conexión a Internet | 8h | 240 |
| 59 | 1.3.1.2 | **Implementación de la Interfaz de Usuario** |  | 9d | 2025-11-10 | 2025-11-18 |  | 2025-11-10 | 2025-11-18 | 0d |  | 135h | 4,050 |
| 60 | 1.3.1.2.1 | Desarrollar Componentes Visuales Reutilizables | manual | 4d | 2025-11-10 | 2025-11-13 | 57, 58 | 2025-11-10 | 2025-11-13 |  | Desarrollador Frontend 1 [75%]; Desarrollador Frontend 2 [75%]; Portátiles [200%]; Conexión a Internet [200%]; Móviles [200%] | 45h | 1,350 |
| 61 | 1.3.1.2.2 | Maquetar las Vistas Principales (inicio, catálogo, cesta, etc.) | manual | 4d | 2025-11-12 | 2025-11-15 | 60SS, 57, 58 | 2025-11-12 | 2025-11-15 |  | Desarrollador Frontend 3 [75%]; Desarrollador Frontend 4 [75%]; Portátiles [200%]; Conexión a Internet [200%]; Móviles [200%] | 45h | 1,350 |
| 62 | 1.3.1.2.3 | Implementar Interacción y Validaciones en el Cliente | manual | 4d | 2025-11-15 | 2025-11-18 | 57, 58, 60SS, 61SS | 2025-11-15 | 2025-11-18 |  | Desarrollador Frontend 1 [75%]; Desarrollador Frontend 2 [75%]; Portátiles [200%]; Conexión a Internet [200%]; Móviles [200%] | 45h | 1,350 |
| 63 | 1.4 | **Aseguramiento de la Calidad del Sistema** |  | 3d | 2025-11-19 | 2025-11-21 |  | 2025-11-19 | 2025-11-21 | 0d |  | 70h | 2,100 |
| 64 | 1.4.1 | **Verificación y Validación del Sistema** |  | 3d | 2025-11-19 | 2025-11-21 |  | 2025-11-19 | 2025-11-21 | 0d |  | 70h | 2,100 |
| 65 | 1.4.1.1 | **Construcción de las Pruebas Unitarias** |  | 3d | 2025-11-19 | 2025-11-21 |  | 2025-11-19 | 2025-11-21 | 0d |  | 40h | 1,200 |
| 66 | 1.4.1.1.1 | Diseñar e Implementar Pruebas Unitarias e Introducir Datos de Prueba | manual | 3d | 2025-11-19 | 2025-11-21 | 62 | 2025-11-19 | 2025-11-21 |  | Tester Q/A 4 [82%]; Tester Q/A 3 [82%]; Portátiles [200%] | 40h | 1,200 |
| 67 | 1.4.1.2 | **Evaluación y Mejora de Resultados de las Pruebas** |  | 3d | 2025-11-19 | 2025-11-21 |  | 2025-11-19 | 2025-11-21 | 0d |  | 30h | 900 |
| 68 | 1.4.1.2.1 | Ejecutar pruebas unitarias, validar requisitos no funcionales y corregir incidencias | manual | 3d | 2025-11-19 | 2025-11-21 | 66SS | 2025-11-19 | 2025-11-21 |  | Tester Q/A 1 [63%]; Tester Q/A 2 [63%]; Portátiles [200%]; Conexión a Internet [200%]; Móviles [200%] | 30h | 900 |
| 69 | 1.5 | **Cierre del Proyecto y Entrega Final** |  | 16d | 2025-11-26 | 2025-12-11 |  | 2025-11-26 | 2025-12-11 | 0d |  | 19h | 570 |
| 70 | 1.5.1 | **Desarrollo Funcional del Sistema** |  | 16d | 2025-11-26 | 2025-12-11 |  | 2025-11-26 | 2025-12-11 | 0d |  | 19h | 570 |
| 71 | 1.5.1.1 | **Puesta en Marcha y Guías de Operación** |  | 3d | 2025-11-26 | 2025-11-28 |  | 2025-11-26 | 2025-11-28 | 0d |  | 18h | 540 |
| 72 | 1.5.1.1.1 | Desplegar el Sistema | manual | 1d | 2025-11-26 | 2025-11-26 | 68 | 2025-11-26 | 2025-11-26 |  | Desarrollador Backend 1 [40%]; Portátiles; Conexión a Internet; Servicios en la nube | 3h | 90 |
| 73 | 1.5.1.1.2 | Elaborar Manual de Uso | manual | 2d | 2025-11-27 | 2025-11-28 | 72 | 2025-11-27 | 2025-11-28 |  | Analista funcional 1 [94%]; Portátiles; Conexión a Internet | 15h | 450 |
| 74 | 1.5.1.2 | **Revisión y Confirmación Final del Proyecto** |  | 1d | 2025-12-11 | 2025-12-11 |  | 2025-12-11 | 2025-12-11 | 0d |  | 1h | 30 |
| 75 | 1.5.1.2.1 | Presentar el Producto Final y los Resultados de las Pruebas | manual | 1d | 2025-12-11 | 2025-12-11 | 72, 73, 30 | 2025-12-11 | 2025-12-11 |  | Analista funcional 1 [13%]; Portátiles; Conexión a Internet; Servicios en la nube | 1h | 30 |
